Schedule from MS Project, 2023-03-06 to 2024-01-05.
Microsoft

## Calendars

- Estándar: Mon-Fri 09:00-13:00, 15:00-19:00; Sat-Sun off.

## Resources

| Resource | Unit | Cost per use |
| --- | --- | --- |
| Darián |  | 56000 |
| Liusmila |  | 56000 |
| Irais |  | 56000 |
| Eric |  | 56000 |
| Jhair |  | 56000 |
| LaptoL | Unidad | 12000 |
| LaptoI | Unidad | 12000 |
| LaptoE | Unidad | 12000 |
| LaptoJ | Unidad | 12000 |
| LaptoD | Unidad | 12000 |
| Internet |  |  |

## Schedule

| ID | WBS | Task | Type | Duration | Start | Finish | Predecessors | Total slack | Costos Indirectos |
| --- | --- | --- | --- | --- | --- | --- | --- | --- | --- |
| 1 | 1 | **Desarrollo Gestión de sistemas CUValles** |  | 220d | 2023-03-06 | 2024-01-05 |  | 0d |  |
| 2 | 1.1 | **FASE DE INICIO** |  | 13d | 2023-03-06 | 2023-03-22 |  | 0d |  |
| 3 | 1.1.1 | Reunión de Visión del proyecto |  | 1d | 2023-03-06 | 2023-03-06 |  | 0d |  |
| 4 | 1.1.2 | Declaración de la visión del proyecto |  | 2d | 2023-03-07 | 2023-03-08 | 3 | 0d |  |
| 5 | 1.1.3 | Descripción del producto |  | 2d | 2023-03-09 | 2023-03-10 | 4 | 0d |  |
| 6 | 1.1.4 | Identificación de requisitos |  | 3d | 2023-03-13 | 2023-03-15 | 5 | 0d |  |
| 7 | 1.1.5 | Identificar el Administrador y patrocinador |  | 1d | 2023-03-16 | 2023-03-16 | 6 | 0d |  |
| 8 | 1.1.6 | Elaborar enunciado del Trabajo |  | 2d | 2023-03-17 | 2023-03-20 | 7 | 0d |  |
| 9 | 1.1.7 | Elaborar Acta Constitutiva del proyecto |  | 2d | 2023-03-21 | 2023-03-22 | 8 | 0d |  |
| 10 | 1.1.8 | Fin de la fase de Inicio | milestone | 0d | 2023-03-22 | 2023-03-22 | 9 | 0d |  |
| 11 | 1.2 | **FASE DE PLANIFICACIÓN Y ESTIMACIÓN** |  | 125d | 2023-03-23 | 2023-09-13 | 2 | 0d |  |
| 12 | 1.2.1 | **RECOLECCIÓN DE REQUISITOS** |  | 71d | 2023-03-23 | 2023-06-29 | 2 | 0d |  |
| 13 | 1.2.1.1 | Determinar fuentes de requisitos y técnicas para recabarlos |  | 5d | 2023-03-23 | 2023-05-15 | 10 | 0d |  |
| 14 | 1.2.1.2 | Ejecutar la recolección |  | 5d | 2023-05-16 | 2023-05-22 | 13 | 0d |  |
| 15 | 1.2.1.3 | Analizar los requisitos (clasificar, priorizar, modelar) |  | 1d | 2023-05-23 | 2023-05-23 | 14 | 0d |  |
| 16 | 1.2.1.4 | Documentar los requisitos |  | 12d | 2023-05-24 | 2023-06-29 | 15 | 0d |  |
| 17 | 1.2.1.5 | Redactar las Historias de Usuario |  | 10d | 2023-06-16 | 2023-06-29 | 16FF | 0d |  |
| 18 | 1.2.1.6 | Verificar los requisitos |  | 5d | 2023-06-23 | 2023-06-29 | 16FF | 0d |  |
| 19 | 1.2.1.7 | Fin de Recolección de Requisitos | milestone | 0d | 2023-06-29 | 2023-06-29 | 18 | 0d |  |
| 20 | 1.2.2 | **DEFINICIÓN DE ALCANCE** |  | 8d | 2023-06-30 | 2023-07-11 | 12 | 0d |  |
| 21 | 1.2.2.1 | Determinar el método de trabajo a aplicar |  | 1d | 2023-06-30 | 2023-06-30 | 18 | 0d | 328 |
| 22 | 1.2.2.2 | Definir el ciclo de vida del proyecto |  | 2d | 2023-07-03 | 2023-07-04 | 21 | 0d | 418 |
| 23 | 1.2.2.3 | Especificar la metodología del proyecto |  | 2d | 2023-07-05 | 2023-07-06 | 22 | 0d | 628 |
| 24 | 1.2.2.4 | Listar los entregables del proyecto |  | 3d | 2023-07-07 | 2023-07-11 | 23 | 0d | 328 |

Notes:
- 19: Se obtienen los entregables: / - Documento de Requisitos / - Matriz de rastreo

| ID | WBS | Task | Duration | Start | Finish | Predecessors | Total slack |
| --- | --- | --- | --- | --- | --- | --- | --- |
| 25 | 1.2.3 | **CREACIÓN DEL EDT** | 1d | 2023-07-12 | 2023-07-12 | 20 | 0d |
| 26 | 1.2.3.1 | Elaborar EDT | 1d | 2023-07-12 | 2023-07-12 | 24 | 0d |
| 27 | 1.2.4 | **ADMINISTRACIÓN DEL TIEMPO** | 6d | 2023-07-13 | 2023-07-20 | 25 | 0d |
| 28 | 1.2.4.1 | Desarrollo del cronograma del proyecto | 5d | 2023-07-13 | 2023-07-19 | 25 | 0d |
| 29 | 1.2.4.2 | Desarrollo del Diagrama de Red | 1d | 2023-07-20 | 2023-07-20 | 28 | 0d |
| 30 | 1.2.5 | **ADMINISTRACIÓN DEL COSTO** | 10d | 2023-07-21 | 2023-08-03 | 27 | 0d |
| 31 | 1.2.5.1 | Preparación del Presupuesto | 5d | 2023-07-21 | 2023-07-27 | 29 | 0d |
| 32 | 1.2.5.2 | Elaboración del Flujo de Efectivo | 5d | 2023-07-28 | 2023-08-03 | 31 | 0d |
| 33 | 1.2.6 | **ADMINISTRACIÓN DE LA CALIDAD** | 5d | 2023-08-04 | 2023-08-10 | 30 | 0d |
| 34 | 1.2.6.1 | Planificación de la calidad | 5d | 2023-08-04 | 2023-08-10 | 32 | 0d |
| 35 | 1.2.7 | **ADMINISTRACIÓN DE RECURSOS HUMANOS** | 2d | 2023-08-11 | 2023-08-14 | 33 | 0d |
| 36 | 1.2.7.1 | Planificación de los recursos humano | 2d | 2023-08-11 | 2023-08-14 | 34 | 0d |
| 37 | 1.2.8 | **ADMINISTRACIÓN DE RIESGOS** | 4d | 2023-08-15 | 2023-08-18 | 35 | 0d |
| 38 | 1.2.8.1 | Identiﬁcación de los Riesgos | 2d | 2023-08-15 | 2023-08-16 | 36 | 0d |
| 39 | 1.2.8.2 | Cualiﬁcación y cuantiﬁcación de los Riesgos | 1d | 2023-08-16 | 2023-08-16 | 38FF | 2d |
| 40 | 1.2.8.3 | Deﬁnición de acciones preventivas para los riesgos | 1d | 2023-08-16 | 2023-08-16 | 38FF | 2d |
| 41 | 1.2.8.4 | Definir las Acciones Correctivas | 1d | 2023-08-16 | 2023-08-16 | 38FF | 0d |
| 42 | 1.2.8.5 | Elaborar el Plan de respuesta a los riesgos | 2d | 2023-08-17 | 2023-08-18 | 41 | 0d |
| 43 | 1.2.9 | **ADMINISTRACIÓN DE INTEGRACIÓN** | 2d | 2023-08-21 | 2023-08-22 | 37 | 0d |
| 44 | 1.2.9.1 | Cruzar la información de los documentos obtenidos y veriﬁcar su consistencia | 1d | 2023-08-21 | 2023-08-21 | 42 | 0d |
| 45 | 1.2.9.2 | Completar la EDT, el Cronograma y el Presupuesto, incluyendo las actividades, tiempos y costos | 1d | 2023-08-22 | 2023-08-22 | 44 | 0d |
| 46 | 1.2.9.3 | Decidir sobre la administración del cambio y la administración de la conﬁguración | 2d | 2023-08-21 | 2023-08-22 | 45FF | 0d |
| 47 | 1.2.9.4 | Integrar el plan del proyecto | 2d | 2023-08-21 | 2023-08-22 | 46FF | 0d |
| 48 | 1.2.10 | **PLANIFICACIÓN DE SPRINT** | 2d | 2023-08-23 | 2023-08-24 | 43 | 0d |
| 49 | 1.2.10.1 | Reunión para Planificar los Sprint Backlog | 1d | 2023-08-23 | 2023-08-23 | 47 | 0d |
| 50 | 1.2.10.2 | Elaborar documento Sprint Backlog | 1d | 2023-08-24 | 2023-08-24 | 49 | 0d |

Notes:
- 34: Se obtienen los entregables: / - Plan de Calidad
- 36: Se obtienen los entregables: / - Matriza de roles y responsabilidades / - Organigrama / - Plan de administración de los recursos humanos

| ID | WBS | Task | Type | Duration | Start | Finish | Predecessors | Total slack |
| --- | --- | --- | --- | --- | --- | --- | --- | --- |
| 51 | 1.2.11 | **CORRECCIÓN DE SPRINT** |  | 10d | 2023-08-31 | 2023-09-13 | 48FS+4d | 0d |
| 52 | 1.2.11.1 | Identificar el problema |  | 1d | 2023-08-31 | 2023-08-31 | 50 | 0d |
| 53 | 1.2.11.2 | Busqueda de solución |  | 2d | 2023-09-01 | 2023-09-04 | 52 | 0d |
| 54 | 1.2.11.3 | Planificar el Backlog |  | 5d | 2023-09-05 | 2023-09-11 | 53 | 0d |
| 55 | 1.2.11.4 | Elaborar documento del sprint Backlog |  | 2d | 2023-09-12 | 2023-09-13 | 54 | 0d |
| 56 | 1.2.12 | Fin de la fase de Planificación y Estimación | milestone | 0d | 2023-09-13 | 2023-09-13 | 55 | 0d |
| 57 | 1.3 | **FASE DE IMPLEMENTACIÓN** |  | 71d | 2023-09-14 | 2023-12-21 | 11 | 0d |
| 58 | 1.3.1 | Daily Standup |  | 2d | 2023-09-14 | 2023-09-15 | 55 | 0d |
| 59 | 1.3.2 | Implementación del sprint del Módulo Usuarios y Roles |  | 10d | 2023-09-18 | 2023-09-29 | 58 | 0d |
| 60 | 1.3.3 | Implementación del sprint del Módulo Áreas |  | 12d | 2023-10-02 | 2023-10-17 | 59 | 0d |
| 61 | 1.3.4 | Implementación del sprint del Módulo Procesos |  | 12d | 2023-10-18 | 2023-11-02 | 60 | 0d |
| 62 | 1.3.5 | Implementación del sprint del Módulo Actividad |  | 15d | 2023-11-03 | 2023-11-23 | 61 | 0d |
| 63 | 1.3.6 | Implementación del sprint del Módulo Formulario |  | 20d | 2023-11-24 | 2023-12-21 | 62 | 0d |
| 64 | 1.4 | **FASE DE REVICIÓN Y RESTROSPECTIVA** |  | 8d | 2023-12-22 | 2024-01-02 | 57 | 0d |
| 65 | 1.4.1 | Reunión de Retrospectiva |  | 1d | 2023-12-22 | 2023-12-22 | 63 | 7d |
| 66 | 1.4.2 | Revisión del sprint del Módulo Usuarios y Roles |  | 5d | 2023-12-22 | 2023-12-28 | 59 | 3d |
| 67 | 1.4.3 | Revisión del sprint del Módulo Áreas |  | 5d | 2023-12-22 | 2023-12-28 | 60 | 3d |
| 68 | 1.4.4 | Revisión del sprint del Módulo Procesos |  | 6d | 2023-12-22 | 2023-12-29 | 61 | 2d |
| 69 | 1.4.5 | Revisión del sprint del Módulo Actividad |  | 6d | 2023-12-22 | 2023-12-29 | 62 | 2d |
| 70 | 1.4.6 | Revisión del sprint del Módulo Formulario |  | 8d | 2023-12-22 | 2024-01-02 | 63 | 0d |
| 71 | 1.5 | **LANZAMIENTO** |  | 3d | 2024-01-03 | 2024-01-05 | 64 | 0d |
| 72 | 1.5.1 | Envio de Entregables |  | 1d | 2024-01-03 | 2024-01-03 | 64 | 0d |
| 73 | 1.5.2 | Retrospectiva del Proyecto |  | 2d | 2024-01-04 | 2024-01-05 | 72 | 0d |
